# 專案1

Schedule from MS Project, 2020-12-14 to 2023-01-17.

## Calendars

- 標準: Mon-Fri 08:00-12:00, 13:00-17:00; Sat-Sun off. Exceptions (off unless hours are given): 2021-01-01 (元旦補假), 2021-02-10 to 2021-02-16 (農曆新年), 2021-02-20 08:00-12:00, 13:00-17:00 (春節補班), 2021-02-26 (228補假), 2021-04-02 to 2021-04-05 (清明連假), 2021-04-30 to 2021-05-02 (勞動節連假), 2021-06-14 (端午連假), 2021-09-11 08:00-12:00, 13:00-17:00 (中秋補班), 2021-09-18 to 2021-09-21 (中秋連假), 2021-10-09 to 2021-10-11 (國慶連假), 2021-12-31 to 2022-01-02 (2022元旦連假), 2022-01-29 to 2022-02-06 (2022農曆新年), 2022-02-26 to 2022-02-28 (2022 228連假), 2022-04-02 to 2022-04-05 (2022 清明連假), 2022-04-30 to 2022-05-02 (2022 勞動節連假), 2022-06-03 to 2022-06-05 (2022 端午節連假), 2022-09-09 to 2022-09-11 (2022 中秋連假), 2022-10-08 to 2022-10-10 (2022 國慶日), 2022-12-31 to 2023-01-02 (2023 元旦).

## Resources

| Resource |
| --- |
| CUB-AF |
| CUB-TF |
| CUB-TFM |
| CUB-IT |
| SAS-AF |
| SAS-TF |
| SAS-TFM |
| SAS-PM |
| CUB-PM |

## Schedule

| ID | WBS | Task | Type | Duration | Start | Finish | Predecessors | Total slack | Free slack | Constraint | Resources | Work |
| --- | --- | --- | --- | --- | --- | --- | --- | --- | --- | --- | --- | --- |
| 1 | 1 | **專案啟動前置作業** |  | 101d | 2020-12-14 | 2021-05-14 |  | 414.19d |  |  | CUB-AF; CUB-TF; CUB-TFM; CUB-IT; SAS-AF; SAS-TF; SAS-TFM | 5656h |
| 2 | 1.1 | **專案SOW討論** |  | 101d | 2020-12-14 | 2021-05-14 |  | 414.19d |  |  |  |  |
| 3 | 1.1.1 | SOW討論協調 |  | 86d | 2020-12-14 | 2021-04-22 |  | 414.19d | 0d | start no earlier than 2020-12-14 |  |  |
| 4 | 1.1.2 | SOW定版送審 |  | 10d | 2021-04-23 | 2021-05-07 | 3 | 414.19d | 0d |  |  |  |
| 5 | 1.1.3 | 完成合約用印 |  | 5d | 2021-05-10 | 2021-05-14 | 4 | 418.19d | 0d |  |  |  |
| 6 | 2 | **進駐相關事項確認** |  | 10d | 2021-05-10 | 2021-05-21 |  | 414.19d |  |  | SAS-PM; CUB-PM | 160h |
| 7 | 2.1 | **甲乙雙方專案成員進駐準備完成確認** |  | 6d | 2021-05-10 | 2021-05-17 |  | 418.19d |  |  |  |  |
| 8 | 2.1.1 | 專案成員門禁卡申請完成 |  | 5d | 2021-05-10 | 2021-05-14 | 4 | 419.19d |  |  |  |  |
| 9 | 2.1.2 | 專案成員聯繫資訊建立完成 |  | 1d | 2021-05-17 | 2021-05-17 | 5 | 418.19d |  |  |  |  |
| 10 | 2.1.3 | 雙方溝通方式及平台設置完成 |  | 1d | 2021-05-17 | 2021-05-17 | 5 | 418.19d |  |  |  |  |
| 11 | 2.2 | **專案場所及硬體設施進駐準備完成確認** |  | 10d | 2021-05-10 | 2021-05-21 |  | 414.19d |  |  |  |  |
| 12 | 2.2.1 | 專案集中作業場所設置完成 |  | 10d | 2021-05-10 | 2021-05-21 | 4 | 414.19d |  |  |  |  |
| 13 | 2.2.2 | 專案開發用電腦設置完成(如需要) |  | 10d | 2021-05-10 | 2021-05-21 | 4 | 414.19d |  |  |  |  |
| 14 | 2.2.3 | 整合/使用者測試環境網路使用申請完成 |  | 10d | 2021-05-10 | 2021-05-21 | 4 | 414.19d |  |  |  |  |
| 15 | 2.2.4 | 整合/使用者測試環境專案成員帳號申請完成 |  | 10d | 2021-05-10 | 2021-05-21 | 4 | 414.19d |  |  |  |  |
| 16 | 2.2.5 | 其他硬體設備設置完成(如印表機…等)(如需要) |  | 10d | 2021-05-10 | 2021-05-21 | 4 | 414.19d |  |  |  |  |
| 17 | 2.3 | **相關申請文件完成確認** |  | 5d | 2021-05-10 | 2021-05-14 |  | 419.19d |  |  |  |  |
| 18 | 2.3.1 | 專案成員保密條款簽核完成 |  | 5d | 2021-05-10 | 2021-05-14 | 4 | 419.19d |  |  |  |  |
| 19 | 3 | **專案啟動** |  | 13.5d | 2021-05-05 | 2021-05-24 |  | 401.5d |  |  | SAS-PM; CUB-PM | 216h |
| 20 | 3.1 | **會議前準備** |  | 10.81d | 2021-05-05 | 2021-05-19 |  | 416.19d |  |  |  |  |
| 21 | 3.1.1 | 啟動會議第一次會前會 |  | 1d | 2021-05-05 | 2021-05-06 |  | 418d | 0d | start no earlier than 2021-05-05 |  |  |
| 22 | 3.1.2 | 製作啟動會議簡報 |  | 3d | 2021-05-06 | 2021-05-11 | 21 | 418d | 1.81d |  |  |  |
| 23 | 3.1.3 | 交付啟動會議簡報(待討論) | milestone | 0d | 2021-05-12 | 2021-05-12 | 22 | 416.19d | 0d | finish no earlier than 2021-05-12 |  |  |
| 24 | 3.1.4 | 啟動會議第二次會前會 | milestone | 0d | 2021-05-12 | 2021-05-12 | 23 | 416.19d | 0d |  |  |  |
| 25 | 3.1.5 | 啟動會議簡報修改 |  | 5d | 2021-05-13 | 2021-05-19 | 24 | 416.19d | 0d |  |  |  |
| 26 | 3.1.6 | 交付修改後啟動會議簡報(待討論) | milestone | 0d | 2021-05-19 | 2021-05-19 | 25 | 416.19d |  |  |  |  |
| 27 | 3.2 | 專案啟動會議 |  | 0.5d | 2021-05-21 | 2021-05-21 |  | 389.5d | 0d | start no earlier than 2021-05-21 |  |  |
| 28 | 3.3 | 專案團隊進駐 |  | 1d | 2021-05-21 | 2021-05-24 | 27 | 413.5d |  |  |  |  |
| 29 | 4 | AF M1-完成合約簽署及專案啟動 | milestone | 0d | 2021-05-21 | 2021-05-21 | 27 | 414.5d |  |  | CUB-AF; CUB-PM; CUB-TF; CUB-TFM; SAS-AF; SAS-PM; SAS-TF; SAS-TFM |  |
| 30 | 5 | TF M1-完成合約簽署及專案啟動 | milestone | 0d | 2021-05-21 | 2021-05-21 | 27 | 414.5d |  |  | CUB-AF; CUB-PM; CUB-TF; CUB-TFM; SAS-AF; SAS-PM; SAS-TF; SAS-TFM |  |
| 31 | 6 | TFM M1-完成合約簽署及專案啟動 | milestone | 0d | 2021-05-21 | 2021-05-21 | 27 | 414.5d |  |  | CUB-AF; CUB-PM; CUB-TF; CUB-TFM; SAS-AF; SAS-PM; SAS-TF; SAS-TFM |  |

| ID | WBS | Task | Duration | Start | Finish | Predecessors | Total slack | Free slack | Constraint | Resources | Work |
| --- | --- | --- | --- | --- | --- | --- | --- | --- | --- | --- | --- |
| 32 | 7 | **系統安裝** | 239.5d | 2021-07-26 | 2022-07-13 |  | 130.5d |  |  | CUB-IT; SAS-AF | 3832h |
| 33 | 7.1 | **整合測試環境** | 31.5d | 2021-07-26 | 2021-09-07 |  | 338.5d | 19d |  |  |  |
| 34 | 7.1.1 | **SAS申請詐欺偵測系統安裝** | 31.5d | 2021-07-26 | 2021-09-07 |  | 338.5d |  |  |  |  |
| 35 | 7.1.1.1 | **開發環境所需硬體、作業系統、網路、防火牆與使用權限等之安裝設定** | 2.5d | 2021-07-26 | 2021-07-28 |  | 338.5d | 0d |  |  |  |
| 36 | 7.1.1.1.1 | Linux & Library | 0.5d | 2021-07-26 | 2021-07-26 |  | 338.5d | 0d | start no earlier than 2021-07-26 |  |  |
| 37 | 7.1.1.1.2 | Host Name | 0.5d | 2021-07-26 | 2021-07-27 | 36 | 338.5d | 0d |  |  |  |
| 38 | 7.1.1.1.3 | NFS Mounting | 0.5d | 2021-07-27 | 2021-07-27 | 37 | 338.5d | 0d |  |  |  |
| 39 | 7.1.1.1.4 | SAS Group & User Accounts | 0.5d | 2021-07-27 | 2021-07-28 | 38 | 338.5d | 0d |  |  |  |
| 40 | 7.1.1.1.5 | Oracle DB & Redis | 0.5d | 2021-07-28 | 2021-07-28 | 39 | 338.5d |  |  |  |  |
| 41 | 7.1.1.2 | **SFM 軟體下載及安裝** | 13.5d | 2021-07-26 | 2021-08-12 |  | 338.5d | 0d |  |  |  |
| 42 | 7.1.1.2.1 | SFM 軟體準備 | 1d | 2021-07-26 | 2021-07-27 |  | 351d |  | start no earlier than 2021-07-26 |  |  |
| 43 | 7.1.1.2.2 | Metadata安裝(三台) | 3d | 2021-07-28 | 2021-08-02 | 35 | 338.5d | 0d |  |  |  |
| 44 | 7.1.1.2.3 | RES+TAS安裝(兩台) | 2d | 2021-08-02 | 2021-08-04 | 43 | 338.5d | 0d |  |  |  |
| 45 | 7.1.1.2.4 | ODE安裝(兩台) | 2d | 2021-08-04 | 2021-08-06 | 44 | 338.5d | 0d |  |  |  |
| 46 | 7.1.1.2.5 | Web services安裝(四台) | 4d | 2021-08-06 | 2021-08-12 | 45 | 338.5d |  |  |  |  |
| 47 | 7.1.1.3 | **SFM軟體佈署與設定** | 14d | 2021-08-12 | 2021-09-01 |  | 338.5d | 0d |  |  |  |
| 48 | 7.1.1.3.1 | Metadata佈署與設定(三台) | 1d | 2021-08-12 | 2021-08-13 | 41 | 338.5d | 0d |  |  |  |
| 49 | 7.1.1.3.2 | RES+TAS佈署與設定(兩台) | 4d | 2021-08-13 | 2021-08-19 | 48 | 338.5d | 0d |  |  |  |
| 50 | 7.1.1.3.3 | ODE佈署與設定(兩台) | 2d | 2021-08-19 | 2021-08-23 | 49 | 338.5d | 0d |  |  |  |
| 51 | 7.1.1.3.4 | Web services佈署與設定(四台) | 4d | 2021-08-23 | 2021-08-27 | 50 | 338.5d | 0d |  |  |  |
| 52 | 7.1.1.3.5 | Middle Tier HA手動設定(三台) | 3d | 2021-08-27 | 2021-09-01 | 51 | 338.5d |  |  |  |  |
| 53 | 7.1.1.4 | **SFM軟體功能測試報告** | 4d | 2021-09-01 | 2021-09-07 |  | 338.5d |  |  |  |  |
| 54 | 7.1.1.4.1 | Define Sample Rule | 0.5d | 2021-09-01 | 2021-09-02 | 47 | 338.5d | 0d |  |  |  |
| 55 | 7.1.1.4.2 | Deploy Rule to ODE | 0.5d | 2021-09-02 | 2021-09-02 | 54 | 338.5d | 0d |  |  |  |
| 56 | 7.1.1.4.3 | Send Txn to ODE | 1d | 2021-09-02 | 2021-09-03 | 55 | 338.5d | 0d |  |  |  |
| 57 | 7.1.1.4.4 | Review Alert | 1d | 2021-09-03 | 2021-09-06 | 56 | 338.5d | 0d |  |  |  |
| 58 | 7.1.1.4.5 | 標準安裝手冊 + 測試報告 | 1d | 2021-09-06 | 2021-09-07 | 57 | 338.5d |  |  |  |  |

| ID | WBS | Task | Duration | Start | Finish | Predecessors | Total slack | Free slack | Constraint |
| --- | --- | --- | --- | --- | --- | --- | --- | --- | --- |
| 59 | 7.1.2 | **安裝SAS視覺化調查管理系統軟體(VI)** | 19.5d | 2021-07-26 | 2021-08-20 |  | 350.5d |  |  |
| 60 | 7.1.2.1 | **開發環境所需硬體、作業系統、網路、防火牆與使用權限等之安裝設定** | 2.5d | 2021-07-26 | 2021-07-28 |  | 350.5d | 0d |  |
| 61 | 7.1.2.1.1 | Linux & Library | 0.5d | 2021-07-26 | 2021-07-26 |  | 350.5d | 0d | start no earlier than 2021-07-26 |
| 62 | 7.1.2.1.2 | Host Name | 0.5d | 2021-07-26 | 2021-07-27 | 61 | 350.5d | 0d |  |
| 63 | 7.1.2.1.3 | NFS Mounting | 0.5d | 2021-07-27 | 2021-07-27 | 62 | 350.5d | 0d |  |
| 64 | 7.1.2.1.4 | SAS Group & User Accounts | 0.5d | 2021-07-27 | 2021-07-28 | 63 | 350.5d | 0d |  |
| 65 | 7.1.2.1.5 | Oracle DB & Redis | 0.5d | 2021-07-28 | 2021-07-28 | 64 | 350.5d |  |  |
| 66 | 7.1.2.2 | **SAS Viya 3.5 軟體下載安裝** | 1d | 2021-07-28 | 2021-07-29 |  | 350.5d | 0d |  |
| 67 | 7.1.2.2.1 | SAS Viya Repository Software Download | 0.3d | 2021-07-28 | 2021-07-28 | 60 | 350.5d | 0d |  |
| 68 | 7.1.2.2.2 | Ansible Library Download | 0.3d | 2021-07-28 | 2021-07-29 | 67 | 350.5d | 0d |  |
| 69 | 7.1.2.2.3 | Oracle Client Download | 0.4d | 2021-07-29 | 2021-07-29 | 68 | 350.5d |  |  |
| 70 | 7.1.2.3 | **SAS Viya軟體各種參數設定及安裝** | 7d | 2021-07-29 | 2021-08-09 |  | 350.5d | 0d |  |
| 71 | 7.1.2.3.1 | inventory.ini角色定義 | 1d | 2021-07-29 | 2021-07-30 | 60, 66 | 350.5d | 0d |  |
| 72 | 7.1.2.3.2 | vars.yml參數定義 | 1d | 2021-07-30 | 2021-08-02 | 71 | 350.5d | 0d |  |
| 73 | 7.1.2.3.3 | sitedefault.yml參數定義 | 1d | 2021-08-02 | 2021-08-03 | 72 | 350.5d | 0d |  |
| 74 | 7.1.2.3.4 | 安裝SAS Viya軟體 | 4d | 2021-08-03 | 2021-08-09 | 73 | 350.5d |  |  |
| 75 | 7.1.2.4 | **SAS Viya AD及DB連線設定** | 4d | 2021-08-09 | 2021-08-13 |  | 350.5d | 0d |  |
| 76 | 7.1.2.4.1 | 設定SAS Viya整合AD帳號 | 1d | 2021-08-09 | 2021-08-10 | 70 | 350.5d | 0d |  |
| 77 | 7.1.2.4.2 | 驗證SAS Viya整合AD帳號 | 1d | 2021-08-10 | 2021-08-11 | 76 | 350.5d | 0d |  |
| 78 | 7.1.2.4.3 | Oracle DB連線設定 | 2d | 2021-08-11 | 2021-08-13 | 77 | 350.5d |  |  |
| 79 | 7.1.2.5 | **軟體各功能測試報告** | 5d | 2021-08-13 | 2021-08-20 |  | 350.5d |  |  |
| 80 | 7.1.2.5.1 | 登入使用測試報告 | 0.5d | 2021-08-13 | 2021-08-16 | 75 | 350.5d | 0d |  |
| 81 | 7.1.2.5.2 | VA報表使用測試報告 | 0.5d | 2021-08-16 | 2021-08-16 | 80 | 350.5d | 0d |  |
| 82 | 7.1.2.5.3 | VA連線DB測試報告 | 1d | 2021-08-16 | 2021-08-17 | 81 | 350.5d | 0d |  |
| 83 | 7.1.2.5.4 | VI使用測試報告 | 1d | 2021-08-17 | 2021-08-18 | 82 | 350.5d | 0d |  |
| 84 | 7.1.2.5.5 | VI連線DB測試報告 | 1d | 2021-08-18 | 2021-08-19 | 83 | 350.5d | 0d |  |
| 85 | 7.1.2.5.6 | 標準安裝手冊 | 1d | 2021-08-19 | 2021-08-20 | 84 | 350.5d |  |  |

| ID | WBS | Task | Duration | Start | Finish | Predecessors | Total slack | Free slack | Constraint |
| --- | --- | --- | --- | --- | --- | --- | --- | --- | --- |
| 86 | 7.1.3 | **接口層軟體安裝** | 10d | 2021-07-26 | 2021-08-09 |  | 360d |  |  |
| 87 | 7.1.3.1 | 接口層AP | 2d | 2021-07-26 | 2021-07-28 |  | 360d | 0d | start no earlier than 2021-07-26 |
| 88 | 7.1.3.2 | 接口層Redis | 2d | 2021-07-28 | 2021-07-30 | 87 | 360d | 0d |  |
| 89 | 7.1.3.3 | 接口層Oracle DB | 2d | 2021-07-30 | 2021-08-03 | 88 | 360d | 0d |  |
| 90 | 7.1.3.4 | 接口層軟體功能安裝測試報告 | 4d | 2021-08-03 | 2021-08-09 | 89 | 360d |  |  |
| 91 | 7.1.4 | **安裝地址正規化套件** | 7d | 2021-07-26 | 2021-08-04 |  | 363d |  |  |
| 92 | 7.1.4.1 | 安裝地址正規化套件 | 5d | 2021-07-26 | 2021-08-02 |  | 363d | 0d | start no earlier than 2021-07-26 |
| 93 | 7.1.4.2 | 地址正規化功能安裝測試報告 | 2d | 2021-08-02 | 2021-08-04 | 92 | 363d |  |  |
| 94 | 7.2 | **使用者測試環境** | 31.5d | 2021-10-04 | 2021-11-17 |  | 289.5d |  |  |
| 95 | 7.2.1 | **SAS申請詐欺偵測系統安裝** | 31.5d | 2021-10-04 | 2021-11-17 |  | 289.5d |  |  |
| 96 | 7.2.1.1 | **開發環境所需硬體、作業系統、網路、防火牆與使用權限等之安裝設定** | 2.5d | 2021-10-04 | 2021-10-06 |  | 289.5d | 0d |  |
| 97 | 7.2.1.1.1 | Linux & Library | 0.5d | 2021-10-04 | 2021-10-04 |  | 289.5d | 0d | start no earlier than 2021-10-04 |
| 98 | 7.2.1.1.2 | Host Name | 0.5d | 2021-10-04 | 2021-10-05 | 97 | 289.5d | 0d |  |
| 99 | 7.2.1.1.3 | NFS Mounting | 0.5d | 2021-10-05 | 2021-10-05 | 98 | 289.5d | 0d |  |
| 100 | 7.2.1.1.4 | SAS Group & User Accounts | 0.5d | 2021-10-05 | 2021-10-06 | 99 | 289.5d | 0d |  |
| 101 | 7.2.1.1.5 | Oracle DB & Redis | 0.5d | 2021-10-06 | 2021-10-06 | 100 | 289.5d |  |  |
| 102 | 7.2.1.2 | **SFM 軟體下載及安裝** | 13.5d | 2021-10-04 | 2021-10-22 |  | 289.5d | 0d |  |
| 103 | 7.2.1.2.1 | SFM 軟體準備 | 1d | 2021-10-04 | 2021-10-05 |  | 302d |  | start no earlier than 2021-10-04 |
| 104 | 7.2.1.2.2 | Metadata安裝(三台) | 3d | 2021-10-06 | 2021-10-12 | 96 | 289.5d | 0d |  |
| 105 | 7.2.1.2.3 | RES+TAS安裝(兩台) | 2d | 2021-10-12 | 2021-10-14 | 104 | 289.5d | 0d |  |
| 106 | 7.2.1.2.4 | ODE安裝(兩台) | 2d | 2021-10-14 | 2021-10-18 | 105 | 289.5d | 0d |  |
| 107 | 7.2.1.2.5 | Web services安裝(四台) | 4d | 2021-10-18 | 2021-10-22 | 106 | 289.5d |  |  |
| 108 | 7.2.1.3 | **SFM軟體佈署與設定** | 14d | 2021-10-22 | 2021-11-11 |  | 289.5d | 0d |  |
| 109 | 7.2.1.3.1 | Metadata佈署與設定(三台) | 1d | 2021-10-22 | 2021-10-25 | 102 | 289.5d | 0d |  |
| 110 | 7.2.1.3.2 | RES+TAS佈署與設定(兩台) | 4d | 2021-10-25 | 2021-10-29 | 109 | 289.5d | 0d |  |
| 111 | 7.2.1.3.3 | ODE佈署與設定(兩台) | 2d | 2021-10-29 | 2021-11-02 | 110 | 289.5d | 0d |  |
| 112 | 7.2.1.3.4 | Web services佈署與設定(四台) | 4d | 2021-11-02 | 2021-11-08 | 111 | 289.5d | 0d |  |
| 113 | 7.2.1.3.5 | Middle Tier HA手動設定(三台) | 3d | 2021-11-08 | 2021-11-11 | 112 | 289.5d |  |  |

| ID | WBS | Task | Duration | Start | Finish | Predecessors | Total slack | Free slack | Constraint |
| --- | --- | --- | --- | --- | --- | --- | --- | --- | --- |
| 114 | 7.2.1.4 | **SFM軟體功能測試報告** | 4d | 2021-11-11 | 2021-11-17 |  | 289.5d |  |  |
| 115 | 7.2.1.4.1 | Define Sample Rule | 0.5d | 2021-11-11 | 2021-11-12 | 108 | 289.5d | 0d |  |
| 116 | 7.2.1.4.2 | Deploy Rule to ODE | 0.5d | 2021-11-12 | 2021-11-12 | 115 | 289.5d | 0d |  |
| 117 | 7.2.1.4.3 | Send Txn to ODE | 1d | 2021-11-12 | 2021-11-15 | 116 | 289.5d | 0d |  |
| 118 | 7.2.1.4.4 | Review Alert | 1d | 2021-11-15 | 2021-11-16 | 117 | 289.5d | 0d |  |
| 119 | 7.2.1.4.5 | 標準安裝手冊 + 測試報告 | 1d | 2021-11-16 | 2021-11-17 | 118 | 289.5d |  |  |
| 120 | 7.2.2 | **安裝SAS視覺化調查管理系統軟體(VI)** | 19.5d | 2021-10-04 | 2021-11-01 |  | 301.5d |  |  |
| 121 | 7.2.2.1 | **開發環境所需硬體、作業系統、網路、防火牆與使用權限等之安裝設定** | 2.5d | 2021-10-04 | 2021-10-06 |  | 301.5d | 0d |  |
| 122 | 7.2.2.1.1 | Linux & Library | 0.5d | 2021-10-04 | 2021-10-04 |  | 301.5d | 0d | start no earlier than 2021-10-04 |
| 123 | 7.2.2.1.2 | Host Name | 0.5d | 2021-10-04 | 2021-10-05 | 122 | 301.5d | 0d |  |
| 124 | 7.2.2.1.3 | NFS Mounting | 0.5d | 2021-10-05 | 2021-10-05 | 123 | 301.5d | 0d |  |
| 125 | 7.2.2.1.4 | SAS Group & User Accounts | 0.5d | 2021-10-05 | 2021-10-06 | 124 | 301.5d | 0d |  |
| 126 | 7.2.2.1.5 | Oracle DB & Redis | 0.5d | 2021-10-06 | 2021-10-06 | 125 | 301.5d |  |  |
| 127 | 7.2.2.2 | **SAS Viya 3.5 軟體下載安裝** | 1d | 2021-10-06 | 2021-10-07 |  | 301.5d | 0d |  |
| 128 | 7.2.2.2.1 | SAS Viya Repository Software Download | 0.3d | 2021-10-06 | 2021-10-06 | 121 | 301.5d | 0d |  |
| 129 | 7.2.2.2.2 | Ansible Library Download | 0.3d | 2021-10-06 | 2021-10-07 | 128 | 301.5d | 0d |  |
| 130 | 7.2.2.2.3 | Oracle Client Download | 0.4d | 2021-10-07 | 2021-10-07 | 129 | 301.5d |  |  |
| 131 | 7.2.2.3 | **SAS Viya軟體各種參數設定及安裝** | 7d | 2021-10-07 | 2021-10-19 |  | 301.5d | 0d |  |
| 132 | 7.2.2.3.1 | inventory.ini角色定義 | 1d | 2021-10-07 | 2021-10-08 | 127, 121 | 301.5d | 0d |  |
| 133 | 7.2.2.3.2 | vars.yml參數定義 | 1d | 2021-10-08 | 2021-10-12 | 132 | 301.5d | 0d |  |
| 134 | 7.2.2.3.3 | sitedefault.yml參數定義 | 1d | 2021-10-12 | 2021-10-13 | 133 | 301.5d | 0d |  |
| 135 | 7.2.2.3.4 | 安裝SAS Viya軟體 | 4d | 2021-10-13 | 2021-10-19 | 134 | 301.5d |  |  |
| 136 | 7.2.2.4 | **SAS Viya AD及DB連線設定** | 4d | 2021-10-19 | 2021-10-25 |  | 301.5d | 0d |  |
| 137 | 7.2.2.4.1 | 設定SAS Viya整合AD帳號 | 1d | 2021-10-19 | 2021-10-20 | 131 | 301.5d | 0d |  |
| 138 | 7.2.2.4.2 | 驗證SAS Viya整合AD帳號 | 1d | 2021-10-20 | 2021-10-21 | 137 | 301.5d | 0d |  |
| 139 | 7.2.2.4.3 | Oracle DB連線設定 | 2d | 2021-10-21 | 2021-10-25 | 138 | 301.5d |  |  |

| ID | WBS | Task | Duration | Start | Finish | Predecessors | Total slack | Free slack | Constraint |
| --- | --- | --- | --- | --- | --- | --- | --- | --- | --- |
| 140 | 7.2.2.5 | **軟體各功能測試報告** | 5d | 2021-10-25 | 2021-11-01 |  | 301.5d |  |  |
| 141 | 7.2.2.5.1 | 登入使用測試報告 | 0.5d | 2021-10-25 | 2021-10-26 | 136 | 301.5d | 0d |  |
| 142 | 7.2.2.5.2 | VA報表使用測試報告 | 0.5d | 2021-10-26 | 2021-10-26 | 141 | 301.5d | 0d |  |
| 143 | 7.2.2.5.3 | VA連線DB測試報告 | 1d | 2021-10-26 | 2021-10-27 | 142 | 301.5d | 0d |  |
| 144 | 7.2.2.5.4 | VI使用測試報告 | 1d | 2021-10-27 | 2021-10-28 | 143 | 301.5d | 0d |  |
| 145 | 7.2.2.5.5 | VI連線DB測試報告 | 1d | 2021-10-28 | 2021-10-29 | 144 | 301.5d | 0d |  |
| 146 | 7.2.2.5.6 | 標準安裝手冊 | 1d | 2021-10-29 | 2021-11-01 | 145 | 301.5d |  |  |
| 147 | 7.2.3 | **接口層軟體安裝** | 10d | 2021-10-04 | 2021-10-19 |  | 311d |  |  |
| 148 | 7.2.3.1 | 接口層AP | 2d | 2021-10-04 | 2021-10-06 |  | 311d | 0d | start no earlier than 2021-10-04 |
| 149 | 7.2.3.2 | 接口層Redis | 2d | 2021-10-06 | 2021-10-08 | 148 | 311d | 0d |  |
| 150 | 7.2.3.3 | 接口層Oracle DB | 2d | 2021-10-08 | 2021-10-13 | 149 | 311d | 0d |  |
| 151 | 7.2.3.4 | 接口層軟體功能安裝測試報告 | 4d | 2021-10-13 | 2021-10-19 | 150 | 311d |  |  |
| 152 | 7.2.4 | **安裝地址正規化套件** | 7d | 2021-10-04 | 2021-10-14 |  | 314d |  |  |
| 153 | 7.2.4.1 | 安裝地址正規化套件 | 5d | 2021-10-04 | 2021-10-12 |  | 314d | 0d | start no earlier than 2021-10-04 |
| 154 | 7.2.4.2 | 地址正規化功能安裝測試報告 | 2d | 2021-10-12 | 2021-10-14 | 153 | 314d |  |  |
| 155 | 7.3 | **正式環境** | 31.5d | 2022-05-30 | 2022-07-13 |  | 130.5d |  |  |
| 156 | 7.3.1 | **SAS申請詐欺偵測系統安裝** | 31.5d | 2022-05-30 | 2022-07-13 |  | 130.5d |  |  |
| 157 | 7.3.1.1 | **開發環境所需硬體、作業系統、網路、防火牆與使用權限等之安裝設定** | 2.5d | 2022-05-30 | 2022-06-01 |  | 130.5d | 0d |  |
| 158 | 7.3.1.1.1 | Linux & Library | 0.5d | 2022-05-30 | 2022-05-30 |  | 130.5d | 0d | start no earlier than 2022-05-30 |
| 159 | 7.3.1.1.2 | Host Name | 0.5d | 2022-05-30 | 2022-05-31 | 158 | 130.5d | 0d |  |
| 160 | 7.3.1.1.3 | NFS Mounting | 0.5d | 2022-05-31 | 2022-05-31 | 159 | 130.5d | 0d |  |
| 161 | 7.3.1.1.4 | SAS Group & User Accounts | 0.5d | 2022-05-31 | 2022-06-01 | 160 | 130.5d | 0d |  |
| 162 | 7.3.1.1.5 | Oracle DB & Redis | 0.5d | 2022-06-01 | 2022-06-01 | 161 | 130.5d |  |  |
| 163 | 7.3.1.2 | **SFM 軟體下載及安裝** | 13.5d | 2022-05-30 | 2022-06-17 |  | 130.5d | 0d |  |
| 164 | 7.3.1.2.1 | SFM 軟體準備 | 1d | 2022-05-30 | 2022-05-31 |  | 143d |  | start no earlier than 2022-05-30 |
| 165 | 7.3.1.2.2 | Metadata安裝(三台) | 3d | 2022-06-01 | 2022-06-07 | 157 | 130.5d | 0d |  |
| 166 | 7.3.1.2.3 | RES+TAS安裝(兩台) | 2d | 2022-06-07 | 2022-06-09 | 165 | 130.5d | 0d |  |
| 167 | 7.3.1.2.4 | ODE安裝(兩台) | 2d | 2022-06-09 | 2022-06-13 | 166 | 130.5d | 0d |  |
| 168 | 7.3.1.2.5 | Web services安裝(四台) | 4d | 2022-06-13 | 2022-06-17 | 167 | 130.5d |  |  |

| ID | WBS | Task | Duration | Start | Finish | Predecessors | Total slack | Free slack | Constraint |
| --- | --- | --- | --- | --- | --- | --- | --- | --- | --- |
| 169 | 7.3.1.3 | **SFM軟體佈署與設定** | 14d | 2022-06-17 | 2022-07-07 |  | 130.5d | 0d |  |
| 170 | 7.3.1.3.1 | Metadata佈署與設定(三台) | 1d | 2022-06-17 | 2022-06-20 | 163 | 130.5d | 0d |  |
| 171 | 7.3.1.3.2 | RES+TAS佈署與設定(兩台) | 4d | 2022-06-20 | 2022-06-24 | 170 | 130.5d | 0d |  |
| 172 | 7.3.1.3.3 | ODE佈署與設定(兩台) | 2d | 2022-06-24 | 2022-06-28 | 171 | 130.5d | 0d |  |
| 173 | 7.3.1.3.4 | Web services佈署與設定(四台) | 4d | 2022-06-28 | 2022-07-04 | 172 | 130.5d | 0d |  |
| 174 | 7.3.1.3.5 | Middle Tier HA手動設定(三台) | 3d | 2022-07-04 | 2022-07-07 | 173 | 130.5d |  |  |
| 175 | 7.3.1.4 | **SFM軟體功能測試報告** | 4d | 2022-07-07 | 2022-07-13 |  | 130.5d |  |  |
| 176 | 7.3.1.4.1 | Define Sample Rule | 0.5d | 2022-07-07 | 2022-07-08 | 169 | 130.5d | 0d |  |
| 177 | 7.3.1.4.2 | Deploy Rule to ODE | 0.5d | 2022-07-08 | 2022-07-08 | 176 | 130.5d | 0d |  |
| 178 | 7.3.1.4.3 | Send Txn to ODE | 1d | 2022-07-08 | 2022-07-11 | 177 | 130.5d | 0d |  |
| 179 | 7.3.1.4.4 | Review Alert | 1d | 2022-07-11 | 2022-07-12 | 178 | 130.5d | 0d |  |
| 180 | 7.3.1.4.5 | 標準安裝手冊 + 測試報告 | 1d | 2022-07-12 | 2022-07-13 | 179 | 130.5d |  |  |
| 181 | 7.3.2 | **安裝SAS視覺化調查管理系統軟體(VI)** | 19.5d | 2022-05-30 | 2022-06-27 |  | 142.5d |  |  |
| 182 | 7.3.2.1 | **開發環境所需硬體、作業系統、網路、防火牆與使用權限等之安裝設定** | 2.5d | 2022-05-30 | 2022-06-01 |  | 142.5d | 0d |  |
| 183 | 7.3.2.1.1 | Linux & Library | 0.5d | 2022-05-30 | 2022-05-30 |  | 142.5d | 0d | start no earlier than 2022-05-30 |
| 184 | 7.3.2.1.2 | Host Name | 0.5d | 2022-05-30 | 2022-05-31 | 183 | 142.5d | 0d |  |
| 185 | 7.3.2.1.3 | NFS Mounting | 0.5d | 2022-05-31 | 2022-05-31 | 184 | 142.5d | 0d |  |
| 186 | 7.3.2.1.4 | SAS Group & User Accounts | 0.5d | 2022-05-31 | 2022-06-01 | 185 | 142.5d | 0d |  |
| 187 | 7.3.2.1.5 | Oracle DB & Redis | 0.5d | 2022-06-01 | 2022-06-01 | 186 | 142.5d |  |  |
| 188 | 7.3.2.2 | **SAS Viya 3.5 軟體下載安裝** | 1d | 2022-06-01 | 2022-06-02 |  | 142.5d | 0d |  |
| 189 | 7.3.2.2.1 | SAS Viya Repository Software Download | 0.3d | 2022-06-01 | 2022-06-01 | 182 | 142.5d | 0d |  |
| 190 | 7.3.2.2.2 | Ansible Library Download | 0.3d | 2022-06-01 | 2022-06-02 | 189 | 142.5d | 0d |  |
| 191 | 7.3.2.2.3 | Oracle Client Download | 0.4d | 2022-06-02 | 2022-06-02 | 190 | 142.5d |  |  |
| 192 | 7.3.2.3 | **SAS Viya軟體各種參數設定及安裝** | 7d | 2022-06-02 | 2022-06-14 |  | 142.5d | 0d |  |
| 193 | 7.3.2.3.1 | inventory.ini角色定義 | 1d | 2022-06-02 | 2022-06-06 | 182, 188 | 142.5d | 0d |  |
| 194 | 7.3.2.3.2 | vars.yml參數定義 | 1d | 2022-06-06 | 2022-06-07 | 193 | 142.5d | 0d |  |
| 195 | 7.3.2.3.3 | sitedefault.yml參數定義 | 1d | 2022-06-07 | 2022-06-08 | 194 | 142.5d | 0d |  |
| 196 | 7.3.2.3.4 | 安裝SAS Viya軟體 | 4d | 2022-06-08 | 2022-06-14 | 195 | 142.5d |  |  |

| ID | WBS | Task | Duration | Start | Finish | Predecessors | Total slack | Free slack | Constraint | Resources | Work |
| --- | --- | --- | --- | --- | --- | --- | --- | --- | --- | --- | --- |
| 197 | 7.3.2.4 | **SAS Viya AD及DB連線設定** | 4d | 2022-06-14 | 2022-06-20 |  | 142.5d | 0d |  |  |  |
| 198 | 7.3.2.4.1 | 設定SAS Viya整合AD帳號 | 1d | 2022-06-14 | 2022-06-15 | 192 | 142.5d | 0d |  |  |  |
| 199 | 7.3.2.4.2 | 驗證SAS Viya整合AD帳號 | 1d | 2022-06-15 | 2022-06-16 | 198 | 142.5d | 0d |  |  |  |
| 200 | 7.3.2.4.3 | Oracle DB連線設定 | 2d | 2022-06-16 | 2022-06-20 | 199 | 142.5d |  |  |  |  |
| 201 | 7.3.2.5 | **軟體各功能測試報告** | 5d | 2022-06-20 | 2022-06-27 |  | 142.5d |  |  |  |  |
| 202 | 7.3.2.5.1 | 登入使用測試報告 | 0.5d | 2022-06-20 | 2022-06-21 | 197 | 142.5d | 0d |  |  |  |
| 203 | 7.3.2.5.2 | VA報表使用測試報告 | 0.5d | 2022-06-21 | 2022-06-21 | 202 | 142.5d | 0d |  |  |  |
| 204 | 7.3.2.5.3 | VA連線DB測試報告 | 1d | 2022-06-21 | 2022-06-22 | 203 | 142.5d | 0d |  |  |  |
| 205 | 7.3.2.5.4 | VI使用測試報告 | 1d | 2022-06-22 | 2022-06-23 | 204 | 142.5d | 0d |  |  |  |
| 206 | 7.3.2.5.5 | VI連線DB測試報告 | 1d | 2022-06-23 | 2022-06-24 | 205 | 142.5d | 0d |  |  |  |
| 207 | 7.3.2.5.6 | 標準安裝手冊 | 1d | 2022-06-24 | 2022-06-27 | 206 | 142.5d |  |  |  |  |
| 208 | 7.3.3 | **接口層軟體安裝** | 10d | 2022-05-30 | 2022-06-14 |  | 152d |  |  |  |  |
| 209 | 7.3.3.1 | 接口層AP | 2d | 2022-05-30 | 2022-06-01 |  | 152d | 0d | start no earlier than 2022-05-30 |  |  |
| 210 | 7.3.3.2 | 接口層Redis | 2d | 2022-06-01 | 2022-06-06 | 209 | 152d | 0d |  |  |  |
| 211 | 7.3.3.3 | 接口層Oracle DB | 2d | 2022-06-06 | 2022-06-08 | 210 | 152d | 0d |  |  |  |
| 212 | 7.3.3.4 | 接口層軟體功能安裝測試報告 | 4d | 2022-06-08 | 2022-06-14 | 211 | 152d |  |  |  |  |
| 213 | 7.3.4 | **安裝地址正規化套件** | 7d | 2022-05-30 | 2022-06-09 |  | 155d |  |  |  |  |
| 214 | 7.3.4.1 | 安裝地址正規化套件 | 5d | 2022-05-30 | 2022-06-07 |  | 155d | 0d | start no earlier than 2022-05-30 |  |  |
| 215 | 7.3.4.2 | 地址正規化功能安裝測試報告 | 2d | 2022-06-07 | 2022-06-09 | 214 | 155d |  |  |  |  |
| 216 | 8 | **需求分析** | 88.5d | 2021-05-25 | 2021-09-28 |  | 17.5d |  |  |  | 16304h |
| 217 | 8.1 | **業務需求研討會** | 7.5d | 2021-05-25 | 2021-06-03 |  | 17.5d |  |  |  | 656h |
| 218 | 8.1.1 | **申請交易詐欺偵測(Application Fraud)** | 4.5d | 2021-05-25 | 2021-05-31 |  | 17.5d |  |  | CUB-AF; CUB-IT; CUB-PM; SAS-AF; SAS-PM | 180h |
| 219 | 8.1.1.1 | 專案範圍及SAS FM/VI解決方案總體介紹 | 0.5d | 2021-05-25 | 2021-05-25 |  | 412.5d |  | start no earlier than 2021-05-25 |  |  |
| 220 | 8.1.1.2 | CUB現況說明 | 0.5d | 2021-05-27 | 2021-05-27 |  | 410.5d |  | start no earlier than 2021-05-27 |  |  |
| 221 | 8.1.1.3 | 專案執行方式說明 | 0.5d | 2021-05-31 | 2021-05-31 |  | 13.5d | 3d | start no earlier than 2021-05-31 |  |  |

| ID | WBS | Task | Duration | Start | Finish | Predecessors | Total slack | Free slack | Constraint | Resources | Work |
| --- | --- | --- | --- | --- | --- | --- | --- | --- | --- | --- | --- |
| 222 | 8.1.2 | **交易詐欺偵測(Transaction fraud)** | 4.5d | 2021-05-25 | 2021-05-31 |  | 17.5d |  |  | CUB-IT; CUB-PM; CUB-TF; SAS-PM; SAS-TF; SAS-TFM | 216h |
| 223 | 8.1.2.1 | 專案範圍及SAS FM解決方案總體介紹 | 0.5d | 2021-05-25 | 2021-05-25 |  | 412.5d |  | start no earlier than 2021-05-25 |  |  |
| 224 | 8.1.2.2 | CUB現況說明 | 0.5d | 2021-05-27 | 2021-05-27 |  | 410.5d |  | start no earlier than 2021-05-27 |  |  |
| 225 | 8.1.2.3 | 專案執行方式說明 | 0.5d | 2021-05-31 | 2021-05-31 |  | 13.5d | 3d | start no earlier than 2021-05-31 |  |  |
| 226 | 8.1.3 | **交易詐欺偵測建模(Transaction Fraud Modeling)** | 6.5d | 2021-05-26 | 2021-06-03 |  | 16.5d |  |  | CUB-IT; CUB-PM; CUB-TFM; SAS-PM; SAS-TFM | 260h |
| 227 | 8.1.3.1 | 專案範圍、建模方法論說明及案例分享 | 0.5d | 2021-05-26 | 2021-05-26 |  | 411.5d |  | start no earlier than 2021-05-26 |  |  |
| 228 | 8.1.3.2 | CUB現況說明 | 0.5d | 2021-06-02 | 2021-06-02 |  | 406.5d |  | start no earlier than 2021-06-02 |  |  |
| 229 | 8.1.3.3 | 專案執行方式說明 | 0.5d | 2021-06-03 | 2021-06-03 |  | 10.5d | 0d | start no earlier than 2021-06-03 |  |  |
| 230 | 8.2 | **業務需求分析** | 81d | 2021-06-03 | 2021-09-28 |  | 10.5d | 0d |  | CUB-AF; CUB-IT; CUB-PM; CUB-TF; SAS-AF; SAS-PM; SAS-TF | 4536h |
| 231 | 8.2.1 | 業務需求訪談 | 60d | 2021-06-03 | 2021-08-27 | 221, 225, 229 | 10.5d | 0d |  |  |  |
| 232 | 8.2.2 | 業務需求分析 | 10d | 2021-08-27 | 2021-09-10 | 231 | 10.5d | 0d |  |  |  |
| 233 | 8.2.3 | 製作業務需求確認書 | 10d | 2021-09-10 | 2021-09-27 | 232 | 10.5d | 0d |  |  |  |
| 234 | 8.2.4 | 交付業務需求分析說明書 | 1d | 2021-09-27 | 2021-09-28 | 233 | 10.5d |  |  |  |  |
| 235 | 8.3 | **系統介面需求分析(需搭配業務需求)** | 31d | 2021-06-03 | 2021-07-19 |  | 369.5d | 0d |  | CUB-AF; CUB-IT; CUB-PM; CUB-TF; SAS-AF; SAS-PM; SAS-TF | 1736h |
| 236 | 8.3.1 | 系統介面需求訪談 | 20d | 2021-06-03 | 2021-07-02 | 221, 225, 229 | 369.5d | 0d |  |  |  |
| 237 | 8.3.2 | 系統介面需求分析 | 5d | 2021-07-02 | 2021-07-09 | 236 | 369.5d | 0d |  |  |  |
| 238 | 8.3.3 | 製作系統介面需求確認書 | 5d | 2021-07-09 | 2021-07-16 | 237 | 369.5d | 0d |  |  |  |
| 239 | 8.3.4 | 交付系統介面需求分析說明書 | 1d | 2021-07-16 | 2021-07-19 | 238 | 369.5d |  |  |  |  |
| 240 | 8.4 | **報表需求分析** | 81d | 2021-06-03 | 2021-09-28 |  | 265.5d | 0d |  | CUB-AF; CUB-IT; CUB-PM; CUB-TF; SAS-AF; SAS-PM; SAS-TF | 4536h |
| 241 | 8.4.1 | 報表需求訪談 | 60d | 2021-06-03 | 2021-08-27 | 221, 225, 229 | 265.5d | 0d |  |  |  |
| 242 | 8.4.2 | 報表需求分析 | 10d | 2021-08-27 | 2021-09-10 | 241 | 265.5d | 0d |  |  |  |
| 243 | 8.4.3 | 製作報表需求確認書 | 10d | 2021-09-10 | 2021-09-27 | 242 | 265.5d | 0d |  |  |  |
| 244 | 8.4.4 | 交付報表需求分析說明書 | 1d | 2021-09-27 | 2021-09-28 | 243 | 265.5d |  |  |  |  |
| 245 | 8.5 | **即時交易查詢平台需求分析** | 81d | 2021-06-03 | 2021-09-28 |  | 319.5d | 0d |  | CUB-IT; CUB-PM; CUB-TF; SAS-PM; SAS-TF | 3240h |
| 246 | 8.5.1 | 系統功能與介面需求訪談 | 60d | 2021-06-03 | 2021-08-27 | 221, 225, 229 | 319.5d | 0d |  |  |  |
| 247 | 8.5.2 | 系統功能與介面需求分析 | 10d | 2021-08-27 | 2021-09-10 | 246 | 319.5d | 0d |  |  |  |
| 248 | 8.5.3 | 製作即時交易查詢平台需求說明書 | 10d | 2021-09-10 | 2021-09-27 | 247 | 319.5d | 0d |  |  |  |
| 249 | 8.5.4 | 交付即時交易查詢平台需求說明書 | 1d | 2021-09-27 | 2021-09-28 | 248 | 319.5d |  |  |  |  |

| ID | WBS | Task | Type | Duration | Start | Finish | Predecessors | Total slack | Free slack | Resources | Work |
| --- | --- | --- | --- | --- | --- | --- | --- | --- | --- | --- | --- |
| 250 | 8.6 | **建模資料分析** |  | 40d | 2021-06-03 | 2021-07-30 |  | 258.5d | 0d | CUB-IT; CUB-PM; CUB-TFM; SAS-PM; SAS-TFM | 1600h |
| 251 | 8.6.1 | 累積資料分析 |  | 20d | 2021-06-03 | 2021-07-02 | 229 | 258.5d | 0d |  |  |
| 252 | 8.6.2 | 模型架構討論 |  | 15d | 2021-07-02 | 2021-07-23 | 251 | 258.5d | 0d |  |  |
| 253 | 8.6.3 | 製作模型架構說明書 |  | 5d | 2021-07-23 | 2021-07-30 | 252 | 258.5d |  |  |  |
| 254 | 9 | **需求確認** |  | 55d | 2021-07-19 | 2021-10-05 |  | 60.5d | 0d |  | 1080h |
| 255 | 9.1 | **業務需求** |  | 5d | 2021-09-28 | 2021-10-05 |  | 10.5d | 0d | CUB-AF; CUB-PM; CUB-TF; SAS-AF; SAS-PM; SAS-TF | 240h |
| 256 | 9.1.1 | 審查簽核業務需求分析說明書 |  | 5d | 2021-09-28 | 2021-10-05 | 230 | 10.5d |  |  |  |
| 257 | 9.2 | **系統介面需求** |  | 5d | 2021-07-19 | 2021-07-26 |  | 369.5d |  | CUB-AF; CUB-PM; CUB-TF; SAS-AF; SAS-PM; SAS-TF | 240h |
| 258 | 9.2.1 | 審查簽核系統介面需求分析說明書 |  | 5d | 2021-07-19 | 2021-07-26 | 235 | 369.5d |  |  |  |
| 259 | 9.3 | **報表需求** |  | 5d | 2021-09-28 | 2021-10-05 |  | 265.5d | 0d | CUB-AF; CUB-PM; CUB-TF; SAS-AF; SAS-PM; SAS-TF | 240h |
| 260 | 9.3.1 | 審查簽核報表需求分析說明書 |  | 5d | 2021-09-28 | 2021-10-05 | 240 | 265.5d |  |  |  |
| 261 | 9.4 | **即時交易查詢平台需求** |  | 5d | 2021-09-28 | 2021-10-05 |  | 319.5d |  | CUB-IT; CUB-PM; CUB-TF; SAS-PM; SAS-TF | 200h |
| 262 | 9.4.1 | 審查簽核即時交易查詢平台需求分析說明書 |  | 5d | 2021-09-28 | 2021-10-05 | 245 | 319.5d |  |  |  |
| 263 | 9.5 | **模型架構確認** |  | 5d | 2021-07-30 | 2021-08-06 |  | 360.5d | 102d | CUB-PM; CUB-TFM; SAS-PM; SAS-TFM | 160h |
| 264 | 9.5.1 | 審查簽核模型架構說明書 |  | 5d | 2021-07-30 | 2021-08-06 | 250 | 360.5d |  |  |  |
| 265 | 10 | AF M2-完成需求分析及測試環境系統安裝 | milestone | 0d | 2021-10-05 | 2021-10-05 | 33, 254 | 319.5d |  | CUB-AF; CUB-IT; CUB-PM; SAS-AF; SAS-PM |  |
| 266 | 11 | TF M2-完成需求分析及測試環境系統安裝 | milestone | 0d | 2021-10-05 | 2021-10-05 | 33, 254 | 319.5d |  | CUB-IT; CUB-PM; CUB-TF; SAS-PM; SAS-TF |  |
| 267 | 12 | **系統設計** |  | 156d | 2021-05-21 | 2021-12-30 |  | 105.5d |  |  | 14080h |
| 268 | 12.1 | **AF, TF系統設計** |  | 116d | 2021-05-21 | 2021-11-04 |  | 105.5d | 91d | CUB-AF; CUB-IT; CUB-PM; CUB-TF; SAS-AF; SAS-PM; SAS-TF | 6496h |
| 269 | 12.1.1 | 系統架構設計 |  | 15d | 2021-05-21 | 2021-06-11 | 27 | 389.5d | 0d |  |  |
| 270 | 12.1.2 | 系統使用授權設計 |  | 10d | 2021-05-21 | 2021-06-04 | 27 | 404.5d |  |  |  |
| 271 | 12.1.3 | SAS申請詐欺偵測系統警示規則設計 |  | 10d | 2021-10-05 | 2021-10-20 | 255 | 299.5d | 0d |  |  |
| 272 | 12.1.4 | SAS視覺化調查管理系統偵測規則設計 |  | 10d | 2021-10-20 | 2021-11-03 | 271 | 299.5d |  |  |  |
| 273 | 12.1.5 | 資料備份設計 |  | 10d | 2021-06-11 | 2021-06-28 | 269 | 389.5d |  |  |  |
| 274 | 12.1.6 | 系統不中斷服務設計 |  | 5d | 2021-06-11 | 2021-06-21 | 269 | 394.5d |  |  |  |
| 275 | 12.1.7 | 系統驗證方式設計 |  | 10d | 2021-10-05 | 2021-10-20 | 255 | 10.5d | 0d |  |  |
| 276 | 12.1.8 | 製作系統設計說明書 |  | 10d | 2021-10-20 | 2021-11-03 | 275 | 10.5d | 0d |  |  |
| 277 | 12.1.9 | 交付系統設計說明書 |  | 1d | 2021-11-03 | 2021-11-04 | 276 | 10.5d | 0d |  |  |

| ID | WBS | Task | Type | Duration | Start | Finish | Predecessors | Total slack | Free slack | Resources | Work |
| --- | --- | --- | --- | --- | --- | --- | --- | --- | --- | --- | --- |
| 278 | 12.2 | **AF, TF客製化報表設計** |  | 49d | 2021-10-05 | 2021-12-14 |  | 265.5d | 63d | CUB-AF; CUB-IT; CUB-PM; CUB-TF; SAS-AF; SAS-PM; SAS-TF | 2744h |
| 279 | 12.2.1 | 客製化報表設計 |  | 32d | 2021-10-05 | 2021-11-19 | 259 | 265.5d | 0d |  |  |
| 280 | 12.2.2 | 製作報表設計說明書 |  | 16d | 2021-11-19 | 2021-12-13 | 279 | 265.5d | 0d |  |  |
| 281 | 12.2.3 | 交付報表設計說明書 |  | 1d | 2021-12-13 | 2021-12-14 | 280 | 265.5d | 0d |  |  |
| 282 | 12.3 | **數據探索** |  | 107d | 2021-07-30 | 2021-12-30 |  | 258.5d | 0d | CUB-IT; CUB-PM; CUB-TFM; SAS-PM; SAS-TFM | 4280h |
| 283 | 12.3.1 | 12個月資料收集 |  | 107d | 2021-07-30 | 2021-12-30 | 250 | 258.5d |  |  |  |
| 284 | 12.3.2 | 樣本時點及偽冒定義 |  | 10d | 2021-07-30 | 2021-08-13 | 250 | 270.5d | 0d |  |  |
| 285 | 12.3.3 | ABT欄位討論 |  | 10d | 2021-08-13 | 2021-08-27 | 284 | 270.5d | 0d |  |  |
| 286 | 12.3.4 | 取樣條件及樣本數討論 |  | 10d | 2021-08-27 | 2021-09-10 | 285 | 270.5d | 0d |  |  |
| 287 | 12.3.5 | 模型區隔變數討論 |  | 10d | 2021-09-10 | 2021-09-27 | 286 | 270.5d | 0d |  |  |
| 288 | 12.4 | **AF, TF系統設計確認** |  | 5d | 2021-11-04 | 2021-11-11 |  | 10.5d |  | CUB-AF; CUB-IT; CUB-PM; CUB-TF; SAS-AF; SAS-PM; SAS-TF | 280h |
| 289 | 12.4.1 | 審查簽核系統設計說明書 |  | 5d | 2021-11-04 | 2021-11-11 | 277 | 10.5d | 0d |  |  |
| 290 | 12.5 | **AF, TF報表設計確認** |  | 5d | 2021-12-14 | 2021-12-21 |  | 265.5d | 58d | CUB-AF; CUB-IT; CUB-PM; CUB-TF; SAS-AF; SAS-PM; SAS-TF | 280h |
| 291 | 12.5.1 | 審查簽核報表設計說明書 |  | 5d | 2021-12-14 | 2021-12-21 | 281 | 265.5d |  |  |  |
| 292 | 13 | TFM M2-完成模型架構、數據探索及模型規劃 | milestone | 0d | 2021-12-30 | 2021-12-30 | 282, 263 | 258.5d |  | CUB-IT; CUB-PM; CUB-TFM; SAS-PM; SAS-TFM |  |
| 293 | 14 | **系統建置** |  | 213.5d | 2021-09-27 | 2022-08-09 |  | 23.5d |  |  | 29868h |
| 294 | 14.1 | **中控接口層介面系統建置及單元測試** |  | 86d | 2021-11-11 | 2022-03-22 |  | 10.5d | 0d | CUB-AF; CUB-IT; CUB-PM; CUB-TF; SAS-AF; SAS-PM; SAS-TF | 4816h |
| 295 | 14.1.1 | 系統開發 |  | 30d | 2021-11-11 | 2021-12-23 | 289 | 10.5d | 0d |  |  |
| 296 | 14.1.2 | 單元測試 |  | 30d | 2021-12-23 | 2022-02-11 | 295 | 36.5d |  |  |  |
| 297 | 14.1.3 | 製作單元測試報告 |  | 40d | 2021-12-23 | 2022-02-25 | 295 | 10.5d | 0d |  |  |
| 298 | 14.1.4 | 交付單元測試報告 |  | 1d | 2022-02-25 | 2022-03-01 | 297 | 10.5d | 0d |  |  |
| 299 | 14.1.5 | 審查簽核單元測試報告 |  | 15d | 2022-03-01 | 2022-03-22 | 298 | 10.5d |  |  |  |
| 300 | 14.2 | **SFM警示規則參數建置單元測試** |  | 86d | 2021-11-11 | 2022-03-22 |  | 10.5d | 0d | CUB-AF; CUB-IT; CUB-PM; CUB-TF; SAS-AF; SAS-PM; SAS-TF | 4816h |
| 301 | 14.2.1 | 系統開發 |  | 30d | 2021-11-11 | 2021-12-23 | 289 | 66.5d |  |  |  |
| 302 | 14.2.2 | 單元測試 |  | 30d | 2021-12-23 | 2022-02-11 | 295 | 36.5d |  |  |  |
| 303 | 14.2.3 | 製作單元測試報告 |  | 40d | 2021-12-23 | 2022-02-25 | 295 | 26.5d |  |  |  |
| 304 | 14.2.4 | 交付單元測試報告 |  | 1d | 2022-02-25 | 2022-03-01 | 297 | 25.5d |  |  |  |
| 305 | 14.2.5 | 審查簽核單元測試報告 |  | 15d | 2022-03-01 | 2022-03-22 | 298 | 10.5d |  |  |  |

| ID | WBS | Task | Type | Duration | Start | Finish | Predecessors | Total slack | Free slack | Constraint | Resources | Work |
| --- | --- | --- | --- | --- | --- | --- | --- | --- | --- | --- | --- | --- |
| 306 | 14.3 | **VI詐欺案件調查系統建置及單元測試** |  | 86d | 2021-11-11 | 2022-03-22 |  | 10.5d | 0d |  | CUB-AF; CUB-IT; CUB-PM; SAS-AF; SAS-PM | 3440h |
| 307 | 14.3.1 | 系統開發 |  | 30d | 2021-11-11 | 2021-12-23 | 289 | 66.5d |  |  |  |  |
| 308 | 14.3.2 | 單元測試 |  | 30d | 2021-12-23 | 2022-02-11 | 295 | 36.5d |  |  |  |  |
| 309 | 14.3.3 | 製作單元測試報告 |  | 40d | 2021-12-23 | 2022-02-25 | 295 | 26.5d |  |  |  |  |
| 310 | 14.3.4 | 交付單元測試報告 |  | 1d | 2022-02-25 | 2022-03-01 | 297 | 25.5d |  |  |  |  |
| 311 | 14.3.5 | 審查簽核單元測試報告 |  | 15d | 2022-03-01 | 2022-03-22 | 298 | 10.5d |  |  |  |  |
| 312 | 14.4 | **VI資料輸出入及介面建置及單元測試** |  | 86d | 2021-11-11 | 2022-03-22 |  | 10.5d | 0d |  | CUB-AF; CUB-IT; CUB-PM; SAS-AF; SAS-PM | 3440h |
| 313 | 14.4.1 | 系統開發 |  | 30d | 2021-11-11 | 2021-12-23 | 289 | 66.5d |  |  |  |  |
| 314 | 14.4.2 | 單元測試 |  | 30d | 2021-12-23 | 2022-02-11 | 295 | 36.5d |  |  |  |  |
| 315 | 14.4.3 | 製作單元測試報告 |  | 40d | 2021-12-23 | 2022-02-25 | 295 | 26.5d |  |  |  |  |
| 316 | 14.4.4 | 交付單元測試報告 |  | 1d | 2022-02-25 | 2022-03-01 | 297 | 25.5d |  |  |  |  |
| 317 | 14.4.5 | 審查簽核單元測試報告 |  | 15d | 2022-03-01 | 2022-03-22 | 298 | 10.5d |  |  |  |  |
| 318 | 14.5 | **歷史資料批次轉換與載入(ETL)** |  | 86d | 2021-11-11 | 2022-03-22 |  | 10.5d | 0d |  | CUB-AF; CUB-IT; CUB-PM; CUB-TF; SAS-AF; SAS-PM; SAS-TF | 4816h |
| 319 | 14.5.1 | 系統開發 |  | 30d | 2021-11-11 | 2021-12-23 | 289 | 66.5d |  |  |  |  |
| 320 | 14.5.2 | 單元測試 |  | 30d | 2021-12-23 | 2022-02-11 | 295 | 36.5d |  |  |  |  |
| 321 | 14.5.3 | 製作單元測試報告 |  | 40d | 2021-12-23 | 2022-02-25 | 295 | 26.5d |  |  |  |  |
| 322 | 14.5.4 | 交付單元測試報告 |  | 1d | 2022-02-25 | 2022-03-01 | 297 | 25.5d |  |  |  |  |
| 323 | 14.5.5 | 審查簽核單元測試報告 |  | 15d | 2022-03-01 | 2022-03-22 | 298 | 10.5d |  |  |  |  |
| 324 | 14.6 | **分析模型建置及驗證** |  | 213.5d | 2021-09-27 | 2022-08-09 |  | 23.5d | 0d |  | CUB-IT; CUB-PM; CUB-TFM; SAS-PM; SAS-TFM | 8540h |
| 325 | 14.6.1 | 初版模型設計(供整合測試使用) |  | 5d | 2021-09-27 | 2021-10-04 | 287 | 270.5d | 0d |  |  |  |
| 326 | 14.6.2 | 數據清理與驗證 |  | 60d | 2021-11-01 | 2022-01-25 |  | 0d |  | start no earlier than 2021-11-01 |  |  |
| 327 | 14.6.3 | 整理彙總數據與變數衍生 |  | 40d | 2022-01-25 | 2022-03-30 | 326 | 0d |  |  |  |  |
| 328 | 14.6.4 | 數據探索與分析 |  | 40d | 2022-03-30 | 2022-05-30 | 327 | 0d |  |  |  |  |
| 329 | 14.6.5 | 變數分析 |  | 20d | 2022-05-30 | 2022-06-28 | 328 | 0d |  |  |  |  |
| 330 | 14.6.6 | 模型架構建置 |  | 30d | 2022-06-28 | 2022-08-09 | 329 | 0d |  |  |  |  |
| 331 | 15 | AF M3-完成系統設計、建置及單元測試 | milestone | 0d | 2022-03-22 | 2022-03-22 | 268, 278, 288, 290, 294, 300, 306, 312, 318 | 207.5d |  |  | CUB-AF; CUB-IT; CUB-PM; SAS-AF; SAS-PM |  |
| 332 | 16 | TF M3-完成系統設計、建置及單元測試 | milestone | 0d | 2022-03-22 | 2022-03-22 | 268, 278, 288, 290, 294, 300, 306, 312, 318 | 207.5d |  |  | CUB-IT; CUB-PM; CUB-TF; SAS-PM; SAS-TF |  |
| 333 | 17 | TFM M3-完成模型建置 | milestone | 0d | 2022-08-09 | 2022-08-09 | 324 | 112d |  |  | CUB-IT; CUB-PM; CUB-TFM; SAS-PM; SAS-TFM |  |

| ID | WBS | Task | Duration | Start | Finish | Predecessors | Total slack | Free slack | Resources | Work |
| --- | --- | --- | --- | --- | --- | --- | --- | --- | --- | --- |
| 334 | 18 | **系統整合測試** | 199d | 2021-10-04 | 2022-07-26 |  | 121.5d |  |  | 23328h |
| 335 | 18.1 | **中控接口層介面系統整合測試** | 86d | 2022-03-22 | 2022-07-26 |  | 10.5d |  | CUB-AF; CUB-IT; CUB-PM; CUB-TF; SAS-AF; SAS-PM; SAS-TF | 4816h |
| 336 | 18.1.1 | 系統整合測試 | 50d | 2022-03-22 | 2022-06-06 | 294, 300, 306, 312, 318 | 10.5d | 0d |  |  |
| 337 | 18.1.2 | 製作系統整合測試報告 | 70d | 2022-03-22 | 2022-07-04 | 294, 300, 306, 312, 318 | 121.5d | 0d |  |  |
| 338 | 18.1.3 | 交付系統整合測試報告 | 1d | 2022-07-04 | 2022-07-05 | 337 | 121.5d | 0d |  |  |
| 339 | 18.1.4 | 審查簽核單元測試報告 | 15d | 2022-07-05 | 2022-07-26 | 338 | 121.5d |  |  |  |
| 340 | 18.2 | **SFM警示規則參數建置整合測試** | 86d | 2022-03-22 | 2022-07-26 |  | 10.5d |  | CUB-AF; CUB-IT; CUB-PM; CUB-TF; SAS-AF; SAS-PM; SAS-TF | 4816h |
| 341 | 18.2.1 | 系統整合測試 | 50d | 2022-03-22 | 2022-06-06 | 294, 300, 306, 312, 318 | 10.5d | 0d |  |  |
| 342 | 18.2.2 | 製作系統整合測試報告 | 70d | 2022-03-22 | 2022-07-04 | 294, 300, 306, 312, 318 | 121.5d | 0d |  |  |
| 343 | 18.2.3 | 交付系統整合測試報告 | 1d | 2022-07-04 | 2022-07-05 | 342 | 121.5d | 0d |  |  |
| 344 | 18.2.4 | 審查簽核單元測試報告 | 15d | 2022-07-05 | 2022-07-26 | 343 | 121.5d |  |  |  |
| 345 | 18.3 | **VI詐欺案件調查系統整合測試** | 86d | 2022-03-22 | 2022-07-26 |  | 10.5d |  | CUB-AF; CUB-IT; CUB-PM; SAS-AF; SAS-PM | 3440h |
| 346 | 18.3.1 | 系統整合測試 | 50d | 2022-03-22 | 2022-06-06 | 294, 300, 306, 312, 318 | 10.5d | 0d |  |  |
| 347 | 18.3.2 | 製作系統整合測試報告 | 70d | 2022-03-22 | 2022-07-04 | 294, 300, 306, 312, 318 | 121.5d | 0d |  |  |
| 348 | 18.3.3 | 交付系統整合測試報告 | 1d | 2022-07-04 | 2022-07-05 | 347 | 121.5d | 0d |  |  |
| 349 | 18.3.4 | 審查簽核單元測試報告 | 15d | 2022-07-05 | 2022-07-26 | 348 | 121.5d |  |  |  |
| 350 | 18.4 | **VI資料輸出入及介面整合測試** | 86d | 2022-03-22 | 2022-07-26 |  | 10.5d |  | CUB-AF; CUB-IT; CUB-PM; SAS-AF; SAS-PM | 3440h |
| 351 | 18.4.1 | 系統整合測試 | 50d | 2022-03-22 | 2022-06-06 | 294, 300, 306, 312, 318 | 10.5d | 0d |  |  |
| 352 | 18.4.2 | 製作系統整合測試報告 | 70d | 2022-03-22 | 2022-07-04 | 294, 300, 306, 312, 318 | 121.5d | 0d |  |  |
| 353 | 18.4.3 | 交付系統整合測試報告 | 1d | 2022-07-04 | 2022-07-05 | 352 | 121.5d | 0d |  |  |
| 354 | 18.4.4 | 審查簽核單元測試報告 | 15d | 2022-07-05 | 2022-07-26 | 353 | 121.5d |  |  |  |
| 355 | 18.5 | **歷史資料批次轉換與載入(ETL)** | 86d | 2022-03-22 | 2022-07-26 |  | 121.5d | 41d | CUB-AF; CUB-IT; CUB-PM; CUB-TF; SAS-AF; SAS-PM; SAS-TF | 4816h |
| 356 | 18.5.1 | 系統整合測試 | 50d | 2022-03-22 | 2022-06-06 | 294, 300, 306, 312, 318 | 157.5d |  |  |  |
| 357 | 18.5.2 | 製作系統整合測試報告 | 70d | 2022-03-22 | 2022-07-04 | 294, 300, 306, 312, 318 | 121.5d | 0d |  |  |
| 358 | 18.5.3 | 交付系統整合測試報告 | 1d | 2022-07-04 | 2022-07-05 | 357 | 121.5d | 0d |  |  |
| 359 | 18.5.4 | 審查簽核單元測試報告 | 15d | 2022-07-05 | 2022-07-26 | 358 | 121.5d |  |  |  |

| ID | WBS | Task | Type | Duration | Start | Finish | Predecessors | Total slack | Free slack | Constraint | Resources | Work |
| --- | --- | --- | --- | --- | --- | --- | --- | --- | --- | --- | --- | --- |
| 360 | 18.6 | **模型整合功能驗證** |  | 50d | 2021-10-04 | 2021-12-14 |  | 270.5d | 190d |  | CUB-IT; CUB-PM; CUB-TFM; SAS-PM; SAS-TFM | 2000h |
| 361 | 18.6.1 | 分析模型佈署 |  | 5d | 2021-10-04 | 2021-10-12 | 325 | 270.5d | 0d |  |  |  |
| 362 | 18.6.2 | 配合系統整合測試 |  | 45d | 2021-10-12 | 2021-12-14 | 361 | 270.5d |  |  |  |  |
| 363 | 19 | **教育訓練** |  | 327d | 2021-06-16 | 2022-10-06 |  | 71d | 4d |  |  | 232h |
| 364 | 19.1 | 關聯網路分析與業務應用 |  | 1d | 2021-06-16 | 2021-06-17 |  | 397d | 316.5d | start no earlier than 2021-06-16 | CUB-AF; CUB-PM; SAS-AF; SAS-PM | 32h |
| 365 | 19.2 | 接口層技術移轉 |  | 1d | 2022-09-20 | 2022-09-21 | 373 | 81.5d | 1d |  | CUB-IT; CUB-PM; SAS-AF; SAS-PM; SAS-TF | 40h |
| 366 | 19.3 | 資訊系統維護技術移轉 |  | 1d | 2022-09-20 | 2022-09-21 | 373, 379, 385, 391, 397 | 79.5d | 0d |  | CUB-IT; CUB-PM; SAS-AF; SAS-PM; SAS-TF | 40h |
| 367 | 19.4 | 申請詐欺偵測規則開發技術移轉 |  | 1d | 2022-09-21 | 2022-09-22 | 366 | 79.5d | 0d |  | CUB-AF; CUB-IT; CUB-PM; SAS-AF; SAS-PM | 40h |
| 368 | 19.5 | 交易詐欺偵測規則開發技術移轉 |  | 1d | 2022-09-22 | 2022-09-23 | 367 | 79.5d | 0d |  | CUB-IT; CUB-PM; CUB-TF; SAS-PM; SAS-TF | 40h |
| 369 | 19.6 | 交易詐欺偵測模型技術移轉 |  | 1d | 2022-10-05 | 2022-10-06 | 406 | 71d |  |  | CUB-IT; CUB-PM; CUB-TFM; SAS-PM; SAS-TFM | 40h |
| 370 | 20 | AF M4-完成整合測試及教育訓練 | milestone | 0d | 2022-09-22 | 2022-09-22 | 335, 340, 345, 350, 355, 360, 364, 365, 366, 367 | 80.5d |  |  | CUB-AF; CUB-IT; CUB-PM; SAS-AF; SAS-PM |  |
| 371 | 21 | TF M4-完成整合測試及教育訓練 | milestone | 0d | 2022-09-23 | 2022-09-23 | 335, 340, 345, 350, 355, 360, 364, 365, 366, 368 | 79.5d |  |  | CUB-IT; CUB-PM; CUB-TF; SAS-PM; SAS-TF |  |
| 372 | 22 | **使用者測試** |  | 85.5d | 2022-06-06 | 2022-10-05 |  | 0d |  |  |  | 20200h |
| 373 | 22.1 | **中控接口層介面系統使用者測試** |  | 75d | 2022-06-06 | 2022-09-20 |  | 10.5d | 0d |  | CUB-AF; CUB-IT; CUB-PM; CUB-TF; SAS-AF; SAS-PM; SAS-TF | 4200h |
| 374 | 22.1.1 | 測試環境的準備與設定 |  | 20d | 2022-06-06 | 2022-07-04 | 336, 341, 346, 351 | 65.5d |  |  |  |  |
| 375 | 22.1.2 | 協助測試資料準備 |  | 30d | 2022-06-06 | 2022-07-18 | 336, 341, 346, 351 | 10.5d | 0d |  |  |  |
| 376 | 22.1.3 | 協助測試方案及案例編寫 |  | 5d | 2022-07-18 | 2022-07-25 | 375 | 10.5d | 0d |  |  |  |
| 377 | 22.1.4 | 使用者測試 |  | 30d | 2022-07-25 | 2022-09-05 | 376 | 10.5d | 0d |  |  |  |
| 378 | 22.1.5 | 協助製作系統整合測試報告 |  | 10d | 2022-09-05 | 2022-09-20 | 377 | 10.5d |  |  |  |  |
| 379 | 22.2 | **SFM警示規則參數建置使用者測試** |  | 75d | 2022-06-06 | 2022-09-20 |  | 10.5d | 0d |  | CUB-AF; CUB-IT; CUB-PM; CUB-TF; SAS-AF; SAS-PM; SAS-TF | 4200h |
| 380 | 22.2.1 | 測試環境的準備與安裝 |  | 20d | 2022-06-06 | 2022-07-04 | 336, 341, 346, 351 | 65.5d |  |  |  |  |
| 381 | 22.2.2 | 協助測試資料準備 |  | 30d | 2022-06-06 | 2022-07-18 | 336, 341, 346, 351 | 10.5d | 0d |  |  |  |
| 382 | 22.2.3 | 協助測試方案及案例編寫 |  | 5d | 2022-07-18 | 2022-07-25 | 381 | 10.5d | 0d |  |  |  |
| 383 | 22.2.4 | 使用者測試 |  | 30d | 2022-07-25 | 2022-09-05 | 382 | 10.5d | 0d |  |  |  |
| 384 | 22.2.5 | 協助製作系統整合測試報告 |  | 10d | 2022-09-05 | 2022-09-20 | 383 | 10.5d |  |  |  |  |

| ID | WBS | Task | Duration | Start | Finish | Predecessors | Total slack | Free slack | Resources | Work |
| --- | --- | --- | --- | --- | --- | --- | --- | --- | --- | --- |
| 385 | 22.3 | **VI詐欺案件調查系統使用者測試** | 75d | 2022-06-06 | 2022-09-20 |  | 10.5d | 0d | CUB-AF; CUB-IT; CUB-PM; SAS-AF; SAS-PM | 3000h |
| 386 | 22.3.1 | 測試環境的準備與安裝 | 20d | 2022-06-06 | 2022-07-04 | 336, 341, 346, 351 | 65.5d |  |  |  |
| 387 | 22.3.2 | 協助測試資料準備 | 30d | 2022-06-06 | 2022-07-18 | 336, 341, 346, 351 | 10.5d | 0d |  |  |
| 388 | 22.3.3 | 協助測試方案及案例編寫 | 5d | 2022-07-18 | 2022-07-25 | 387 | 10.5d | 0d |  |  |
| 389 | 22.3.4 | 使用者測試 | 30d | 2022-07-25 | 2022-09-05 | 388 | 10.5d | 0d |  |  |
| 390 | 22.3.5 | 協助製作系統整合測試報告 | 10d | 2022-09-05 | 2022-09-20 | 389 | 10.5d |  |  |  |
| 391 | 22.4 | **VI資料輸出入及介面使用者測試** | 75d | 2022-06-06 | 2022-09-20 |  | 10.5d | 0d | CUB-AF; CUB-IT; CUB-PM; SAS-AF; SAS-PM | 3000h |
| 392 | 22.4.1 | 測試環境的準備與安裝 | 20d | 2022-06-06 | 2022-07-04 | 336, 341, 346, 351 | 65.5d |  |  |  |
| 393 | 22.4.2 | 協助測試資料準備 | 30d | 2022-06-06 | 2022-07-18 | 336, 341, 346, 351 | 10.5d | 0d |  |  |
| 394 | 22.4.3 | 協助測試方案及案例編寫 | 5d | 2022-07-18 | 2022-07-25 | 393 | 10.5d | 0d |  |  |
| 395 | 22.4.4 | 使用者測試 | 30d | 2022-07-25 | 2022-09-05 | 394, 401 | 10.5d | 0d |  |  |
| 396 | 22.4.5 | 協助製作系統整合測試報告 | 10d | 2022-09-05 | 2022-09-20 | 395 | 10.5d |  |  |  |
| 397 | 22.5 | **歷史資料批次轉換與載入(ETL)** | 75d | 2022-06-06 | 2022-09-20 |  | 10.5d | 0d | CUB-AF; CUB-IT; CUB-PM; CUB-TF; SAS-AF; SAS-PM; SAS-TF | 4200h |
| 398 | 22.5.1 | 測試環境的準備與安裝 | 20d | 2022-06-06 | 2022-07-04 | 336, 341, 346, 351 | 65.5d |  |  |  |
| 399 | 22.5.2 | 歷史資料批次轉換 | 30d | 2022-06-06 | 2022-07-18 | 336, 341, 346, 351 | 55.5d |  |  |  |
| 400 | 22.5.3 | 資料驗證 | 30d | 2022-06-06 | 2022-07-18 | 336, 341, 346, 351 | 10.5d | 0d |  |  |
| 401 | 22.5.4 | 協助測試方案及案例編寫 | 5d | 2022-07-18 | 2022-07-25 | 400 | 10.5d | 0d |  |  |
| 402 | 22.5.5 | 使用者測試 | 30d | 2022-07-25 | 2022-09-05 | 401 | 10.5d | 0d |  |  |
| 403 | 22.5.6 | 協助製作系統整合測試報告 | 10d | 2022-09-05 | 2022-09-20 | 402 | 10.5d |  |  |  |
| 404 | 22.6 | **分析模型驗證及調校** | 40d | 2022-08-09 | 2022-10-05 |  | 0d |  | CUB-IT; CUB-PM; CUB-TFM; SAS-PM; SAS-TFM | 1600h |
| 405 | 22.6.1 | 模型驗證及調校 | 20d | 2022-08-09 | 2022-09-06 | 330 | 0d |  |  |  |
| 406 | 22.6.2 | 模型效度確認 | 20d | 2022-09-06 | 2022-10-05 | 405 | 0d |  |  |  |
| 407 | 23 | **系統上線** | 11d | 2022-10-05 | 2022-10-21 |  | 0d |  |  | 1152h |
| 408 | 23.1 | **上線文件** | 11d | 2022-10-05 | 2022-10-21 |  | 0d |  | CUB-AF; CUB-IT; CUB-PM; CUB-TF; CUB-TFM; SAS-AF; SAS-PM; SAS-TF; SAS-TFM | 792h |
| 409 | 23.1.1 | **系統上線文件製作** | 10d | 2022-10-05 | 2022-10-20 |  | 0d |  |  |  |
| 410 | 23.1.1.1 | 製作系統緊急復原方案 | 10d | 2022-10-05 | 2022-10-20 | 372 | 0d |  |  |  |
| 411 | 23.1.1.2 | 協助制訂上線計畫 | 10d | 2022-10-05 | 2022-10-20 | 372 | 1d |  |  |  |

| ID | WBS | Task | Type | Duration | Start | Finish | Predecessors | Total slack | Free slack | Resources | Work |
| --- | --- | --- | --- | --- | --- | --- | --- | --- | --- | --- | --- |
| 412 | 23.1.2 | **系統上線文件交付** |  | 1d | 2022-10-20 | 2022-10-21 |  | 0d |  |  |  |
| 413 | 23.1.2.1 | 交付系統緊急復原方案 |  | 1d | 2022-10-20 | 2022-10-21 | 410 | 0d |  |  |  |
| 414 | 23.2 | **上線程式** |  | 5d | 2022-10-05 | 2022-10-13 |  | 6d | 0d | CUB-AF; CUB-IT; CUB-PM; CUB-TF; CUB-TFM; SAS-AF; SAS-PM; SAS-TF; SAS-TFM | 360h |
| 415 | 23.2.1 | 上線程式清單彙整交付 |  | 5d | 2022-10-05 | 2022-10-13 | 372 | 6d |  |  |  |
| 416 | 23.2.2 | 上線程式交付 |  | 5d | 2022-10-05 | 2022-10-13 | 372 | 6d |  |  |  |
| 417 | 24 | AF M5-完成使用者系統測試與系統上線 | milestone | 0d | 2022-10-21 | 2022-10-21 | 373, 379, 385, 391, 397, 408, 414 | 61d |  | CUB-AF; CUB-IT; CUB-PM; SAS-AF; SAS-PM |  |
| 418 | 25 | TF M5-完成使用者系統測試與系統上線 | milestone | 0d | 2022-10-21 | 2022-10-21 | 373, 379, 397, 408, 414 | 61d |  | CUB-IT; CUB-PM; CUB-TF; SAS-PM; SAS-TF |  |
| 419 | 26 | TFM M4-完成模型驗證調校、教育訓練及上線 | milestone | 0d | 2022-10-13 | 2022-10-13 | 414, 363 | 67d |  | CUB-IT; CUB-PM; CUB-TFM; SAS-PM; SAS-TFM |  |
| 420 | 27 | **上線後平行驗證** |  | 61d | 2022-10-21 | 2023-01-17 |  | 0d |  |  | 17352h |
| 421 | 27.1 | **中控接口層介面系統** |  | 60d | 2022-10-21 | 2023-01-16 |  | 0d |  | CUB-AF; CUB-IT; CUB-PM; CUB-TF; SAS-AF; SAS-PM; SAS-TF | 3360h |
| 422 | 27.1.1 | 功能驗證 |  | 60d | 2022-10-21 | 2023-01-16 | 407 | 0d |  |  |  |
| 423 | 27.1.2 | 資料驗證 |  | 60d | 2022-10-21 | 2023-01-16 | 407 | 0d |  |  |  |
| 424 | 27.2 | **SFM警示規則參數建置** |  | 60d | 2022-10-21 | 2023-01-16 |  | 0d |  | CUB-AF; CUB-IT; CUB-PM; CUB-TF; SAS-AF; SAS-PM; SAS-TF | 3360h |
| 425 | 27.2.1 | 功能驗證 |  | 60d | 2022-10-21 | 2023-01-16 | 407 | 0d |  |  |  |
| 426 | 27.2.2 | 資料驗證 |  | 60d | 2022-10-21 | 2023-01-16 | 407 | 0d |  |  |  |
| 427 | 27.3 | **VI詐欺案件調查系統** |  | 60d | 2022-10-21 | 2023-01-16 |  | 0d |  | CUB-AF; CUB-IT; CUB-PM; SAS-AF; SAS-PM | 2400h |
| 428 | 27.3.1 | 功能驗證 |  | 60d | 2022-10-21 | 2023-01-16 | 407 | 0d |  |  |  |
| 429 | 27.3.2 | 資料驗證 |  | 60d | 2022-10-21 | 2023-01-16 | 407 | 0d |  |  |  |
| 430 | 27.4 | **VI資料輸出入及介面** |  | 60d | 2022-10-21 | 2023-01-16 |  | 0d |  | CUB-AF; CUB-IT; CUB-PM; SAS-AF; SAS-PM | 2400h |
| 431 | 27.4.1 | 功能驗證 |  | 60d | 2022-10-21 | 2023-01-16 | 407 | 0d |  |  |  |
| 432 | 27.4.2 | 資料驗證 |  | 60d | 2022-10-21 | 2023-01-16 | 407 | 0d |  |  |  |
| 433 | 27.5 | **歷史資料批次轉換與載入** |  | 60d | 2022-10-21 | 2023-01-16 |  | 0d |  | CUB-AF; CUB-IT; CUB-PM; CUB-TF; SAS-AF; SAS-PM; SAS-TF | 3360h |
| 434 | 27.5.1 | 功能驗證 |  | 60d | 2022-10-21 | 2023-01-16 | 407 | 0d |  |  |  |
| 435 | 27.5.2 | 資料驗證 |  | 60d | 2022-10-21 | 2023-01-16 | 407 | 0d |  |  |  |

| ID | WBS | Task | Type | Duration | Start | Finish | Predecessors | Total slack | Resources | Work |
| --- | --- | --- | --- | --- | --- | --- | --- | --- | --- | --- |
| 436 | 27.6 | **分析模型上線後平行效度驗證** |  | 60d | 2022-10-21 | 2023-01-16 |  | 0d | CUB-IT; CUB-PM; CUB-TFM; SAS-PM; SAS-TFM | 2400h |
| 437 | 27.6.1 | 模型調校 |  | 30d | 2022-10-21 | 2022-12-02 | 407 | 0d |  |  |
| 438 | 27.6.2 | 模型效度驗證 |  | 30d | 2022-12-02 | 2023-01-16 | 437 | 0d |  |  |
| 439 | 27.7 | 完成上線後系統驗證 |  | 1d | 2023-01-16 | 2023-01-17 | 421, 424, 427, 430, 433, 436 | 0d | CUB-AF; CUB-IT; CUB-PM; CUB-TF; CUB-TFM; SAS-AF; SAS-PM; SAS-TF; SAS-TFM | 72h |
| 440 | 28 | AF M6-上線後觀察屆滿三個月 | milestone | 0d | 2023-01-17 | 2023-01-17 | 439 | 0d | CUB-AF; CUB-IT; CUB-PM; SAS-AF; SAS-PM |  |
| 441 | 29 | TF M6-上線後觀察屆滿三個月 | milestone | 0d | 2023-01-17 | 2023-01-17 | 439 | 0d | CUB-IT; CUB-PM; CUB-TF; SAS-PM; SAS-TF |  |
| 442 | 30 | TFM M5-上線後觀察屆滿三個月 | milestone | 0d | 2023-01-17 | 2023-01-17 | 439 | 0d | CUB-IT; CUB-PM; CUB-TFM; SAS-PM; SAS-TFM |  |
